# ekdosi2007

Schedule from MS Project, 2023-03-13 to 2023-09-28.

## Calendars

- Τυπικό: Mon-Fri 08:00-12:00, 13:00-17:00; Sat-Sun off.

## Resources

| Resource |
| --- |
| Project Manager |
| Προγραμματιστής |
| Οικονομικός Αναλυτής |
| Αναλυτής Ποιότητας |
| Επιχειρηματικός Αναλυτής |
| Αναλυτής ΠΣ |
| UI/UX Designer |
| Σχεδιαστής ΠΣ |
| Ειδικός προμηθειών |
| Νομικός Σύμβουλος |
| Τεχνικός Ειδικός |
| Ανάδοχος |
| Προγραμματιστής Ιστοσελίδας |
| Προγραμματιστής Βάσης Δεδομένων |
| Υπεύθυνος Εκπαίδευσης Χρηστών |
| Τεχνικός δοκιμών/ελέγχων |
| Τεχνικός Συγγραφές |

## Schedule

| ID | WBS | Task | Type | Duration | Start | Finish | Predecessors | Total slack | Resources | Work |
| --- | --- | --- | --- | --- | --- | --- | --- | --- | --- | --- |
| 1 | 1 | Start | milestone | 0d | 2023-03-13 | 2023-03-13 |  | 0d |  |  |
| 2 | 2 | **WP 1 - Έναρξη του έργου** |  | 9d | 2023-03-13 | 2023-03-23 |  | 0d |  | 256h |
| 3 | 2.1 | T 1.1: Καθορισμός του πεδίου εφαρμογής και των στόχων του έργου |  | 2d | 2023-03-13 | 2023-03-14 | 1 | 0d | Επιχειρηματικός Αναλυτής [200%] | 32h |
| 4 | 2.2 | T 1.2: Προσδιορισμός των εμπλεκομένων μερών του έργου |  | 1d | 2023-03-13 | 2023-03-13 | 1 | 1d | Επιχειρηματικός Αναλυτής [200%] | 16h |
| 5 | 2.3 | T 1.3: Ανάπτυξη χάρτη έργου |  | 5d | 2023-03-15 | 2023-03-21 | 4, 3 | 137d | Επιχειρηματικός Αναλυτής | 40h |
| 6 | 2.4 | Τ 1.4: Δημιουργία Αίτησης Συστήματος (System Request) |  | 2d | 2023-03-15 | 2023-03-16 | 4, 3 | 0d | Επιχειρηματικός Αναλυτής [300%] | 48h |
| 7 | 2.5 | Τ 1.5: Πραγματοποίηση ανάλυση σκοπιμότητας του έργου |  | 5d | 2023-03-17 | 2023-03-23 | 6 | 0d | Επιχειρηματικός Αναλυτής [300%] | 120h |
| 8 | 3 | **WP2 - Ανάλυση (analysis)** |  | 36d | 2023-03-24 | 2023-05-12 |  | 0d |  | 1496h |
| 9 | 3.1 | T 2.1: Προσδιορισμός των απαιτήσεων του συστήματος |  | 5d | 2023-03-24 | 2023-03-30 | 7 | 0d | Αναλυτής ΠΣ [500%] | 200h |
| 10 | 3.2 | T 2.2: Επιχειρηματική μοντελοποίηση υπάρχουσας κατάσταση (ΑS-IS) |  | 8d | 2023-03-31 | 2023-04-11 | 9 | 0d | Αναλυτής ΠΣ [500%] | 320h |
| 11 | 3.3 | Τ 2.3: Επιχειρηματική μοντελοποίηση ζητούμενης κατάστασης (ΤΟ-ΒΕ)) |  | 10d | 2023-04-12 | 2023-04-25 | 10 | 0d | Αναλυτής ΠΣ [500%] | 400h |
| 12 | 3.4 | T 2.4: Συλλογή και Καθορισμός Απαιτήσεων Χρηστών |  | 8d | 2023-04-26 | 2023-05-05 | 11 | 5d | Αναλυτής ΠΣ [200%] | 128h |
| 13 | 3.5 | Τ 2.5: Δημιουργία Διαγράμματος Περιπτώσεων Χρήσης |  | 5d | 2023-04-26 | 2023-05-02 | 11 | 0d | Αναλυτής ΠΣ [500%] | 200h |
| 14 | 3.6 | Τ 2.6: Συγγραφή Λεκτικών Περιγραφών |  | 7d | 2023-05-03 | 2023-05-11 | 13 | 1d | Αναλυτής ΠΣ | 56h |
| 15 | 3.7 | T 2.7: Δημιουργία πρόχειρων οθονών |  | 8d | 2023-05-03 | 2023-05-12 | 13 | 0d | Αναλυτής ΠΣ [200%]; UI/UX Designer | 192h |
| 16 | 4 | **WP3 - Σχεδιασμός** |  | 33d | 2023-05-15 | 2023-06-28 |  | 0d |  | 1040h |
| 17 | 4.1 | Τ 3.1: Ανάλυση Λεκτικών Περιγραφών Περιπτώσεων Χρήσης |  | 8d | 2023-05-15 | 2023-05-24 | 13, 14, 15, 12 | 0d | Σχεδιαστής ΠΣ [400%] | 256h |
| 18 | 4.2 | Τ 3.2: Δημιουργία Διαγραμμάτων κλάσεων και αντικειμένων |  | 10d | 2023-05-25 | 2023-06-07 | 17 | 0d | Σχεδιαστής ΠΣ [400%] | 320h |
| 19 | 4.3 | Τ 3.3: Δημιουργία Διαγραμμάτων ακολουθίας |  | 8d | 2023-06-08 | 2023-06-19 | 18 | 0d | Σχεδιαστής ΠΣ [300%] | 192h |
| 20 | 4.4 | Τ 3.4: Σύνταξη Λεκτικών Περιγραφών Σχεδίασης |  | 6d | 2023-06-08 | 2023-06-15 | 18 | 2d | Σχεδιαστής ΠΣ | 48h |
| 21 | 4.5 | Τ 3.5: Δημιουργία Τελικού Διαγράμματος κλάσεων |  | 7d | 2023-06-20 | 2023-06-28 | 18, 19, 20 | 0d | Σχεδιαστής ΠΣ [400%] | 224h |
| 22 | 5 | **WP4 - Υλοποίηση** |  | 97d | 2023-03-24 | 2023-08-07 |  | 0d |  | 488h |
| 23 | 5.1 | T 4.1: Αναζήτηση και επικοινωνία με Ανάδοχους |  | 10d | 2023-03-24 | 2023-04-06 | 7 | 59d | Project Manager; Ειδικός προμηθειών | 160h |
| 24 | 5.2 | Τ 4.2: Συνάντηση με ανάδοχους |  | 5d | 2023-06-29 | 2023-07-05 | 23, 21 | 0d | Project Manager; Ειδικός προμηθειών; Νομικός Σύμβουλος | 120h |
| 25 | 5.3 | T 4.3: Επιλογή αναδόχου και ανάθεση έργου |  | 3d | 2023-07-06 | 2023-07-10 | 24 | 0d | Project Manager; Τεχνικός Ειδικός | 48h |
| 26 | 5.4 | Τ 4.4: Δημιουργία Πληροφοριακού Συστήματος από Ανάδοχο |  | 20d | 2023-07-11 | 2023-08-07 | 25 | 0d | Ανάδοχος | 160h |

| ID | WBS | Task | Type | Duration | Start | Finish | Predecessors | Total slack | Resources | Work |
| --- | --- | --- | --- | --- | --- | --- | --- | --- | --- | --- |
| 27 | 6 | **WP5 - Εγκατάσταση και έλεγχος ΠΣ** |  | 38d | 2023-08-08 | 2023-09-28 |  | 0d |  | 744h |
| 28 | 6.1 | T 5.1: Εγκατάσταση ιστοσελίδας στον καθορισμένο διακομιστή. |  | 7d | 2023-08-08 | 2023-08-16 | 26 | 0d | Προγραμματιστής Ιστοσελίδας [200%]; UI/UX Designer; Προγραμματιστής Βάσης Δεδομένων | 224h |
| 29 | 6.2 | Τ 5.2: Εντοπισμός (ανατροφοδότηση) και διόρθωση σφαλμάτων |  | 10d | 2023-08-17 | 2023-08-30 | 28 | 0d | Προγραμματιστής Ιστοσελίδας [200%]; Τεχνικός δοκιμών/ελέγχων | 240h |
| 30 | 6.3 | Τ 5.3: Επανέλεγχος ΠΣ |  | 7d | 2023-08-31 | 2023-09-08 | 29 | 0d | Προγραμματιστής Ιστοσελίδας [200%]; Τεχνικός δοκιμών/ελέγχων | 168h |
| 31 | 6.4 | Τ 5.4: Εκπαίδευση προσωπικού |  | 14d | 2023-09-11 | 2023-09-28 | 30 | 0d | Υπεύθυνος Εκπαίδευσης Χρηστών | 112h |
| 32 | 7 | **WP6 - Φάση κλεισίματος ( Κλείσιμο του έργου )** |  | 14d | 2023-09-11 | 2023-09-28 |  | 0d |  | 160h |
| 33 | 7.1 | Τ 6.1: Δημιουργία τεκμηρίωσης του έργου, συμπεριλαμβανομένων των εγγράφων σχεδιασμού. |  | 5d | 2023-09-11 | 2023-09-15 | 30 | 9d | Τεχνικός Συγγραφές [200%] | 80h |
| 34 | 7.2 | Τ 6.2: Εκπόνηση έκθεσης έργου που συνοψίζει τα αποτελέσματα του έργου. |  | 5d | 2023-09-11 | 2023-09-15 | 30 | 9d | Τεχνικός Συγγραφές [200%] | 80h |
| 35 | 7.3 | Finish | milestone | 0d | 2023-09-28 | 2023-09-28 | 33, 34, 31, 5 | 0d |  |  |
